# Cronograma Drinks

Schedule from MS Project, 2016-05-11 to 2016-06-29, costs in R$.

## Calendars

- Padrão: Mon-Fri 09:00-12:00, 13:00-18:00; Sat-Sun off.

## Resources

| Resource | Rate |
| --- | --- |
| Adriana | 150 |
| Beatriz | 150 |
| Cliente |  |
| GP Externo | 200 |
| Gabriela | 150 |
| Tiago |  |
| Desenvolvedor de código | 100 |

## Schedule

| ID | WBS | Task | Type | Duration | Start | Finish | Predecessors | Total slack | Free slack | Resources | Work | Cost |
| --- | --- | --- | --- | --- | --- | --- | --- | --- | --- | --- | --- | --- |
| 1 | 1 | **Drinks** |  | 36d | 2016-05-11 09:00 | 2016-06-29 18:00 |  |  |  |  | 251.77h | 27,796.05 |
| 2 | 1.1 | **Prospecção** |  | 8d | 2016-05-11 09:00 | 2016-05-20 18:00 |  |  |  |  | 33h | 4,700 |
| 3 | 1.1.1 | **PTEC** |  | 6d | 2016-05-11 09:00 | 2016-05-18 18:00 |  |  |  |  | 30h | 4,350 |
| 4 | 1.1.1.1 | Estudar Domínio de Aplicação | manual | 0.25d | 2016-05-11 09:00 | 2016-05-11 16:00 |  |  |  | Gabriela | 2h | 300 |
| 5 | 1.1.1.2 | Reunir-se com fornecedor de Requisitos | manual | 0.62d | 2016-05-11 16:00 | 2016-05-12 17:00 | 4 |  |  | Gabriela | 5h | 750 |
| 6 | 1.1.1.3 | Redigir PTEC |  | 2.75d | 2016-05-12 17:00 | 2016-05-16 12:00 | 5 | 31.12d | 2.38d | Gabriela | 22h | 3,300 |
| 7 | 1.1.1.4 | Revisar Proposta Tecnica | manual | 0.12d | 2016-05-18 16:00 | 2016-05-18 17:00 | 6 |  |  | Tiago | 1h |  |
| 8 | 1.1.1.5 | Aprovar PTEC | milestone, manual | 0d | 2016-05-18 17:00 | 2016-05-18 17:00 | 7 |  |  | Cliente |  |  |
| 9 | 1.1.2 | **Estimativa Preliminar de Tamanho** |  | 1d | 2016-05-20 09:00 | 2016-05-20 18:00 |  |  |  |  | 2h | 350 |
| 10 | 1.1.2.1 | Estimar Tamanho do Projeto | manual | 0.12d | 2016-05-20 09:00 | 2016-05-20 10:00 | 8 |  |  | Adriana | 1h | 150 |
| 11 | 1.1.2.2 | Revisar Estimativa de tamanho do Projeto | manual | 0.12d | 2016-05-20 14:00 | 2016-05-20 15:00 | 10 |  |  | GP Externo | 1h | 200 |
| 12 | 1.1.3 | **Estimativa Preliminar de Cronograma e Orçamento** |  | 0.5d? | 2016-05-11 09:00 | 2016-05-11 14:00 |  |  |  |  | 1h |  |
| 13 | 1.1.3.1 | Elaborar Cronograma e Orçamento Preliminares | milestone, manual | 0d | 2016-05-20 18:00 | 2016-05-20 18:00 | 9 |  |  | Beatriz |  |  |
| 14 | 1.1.3.2 | Revisar cronograma e Orçamento Preliminares | manual | 0.12d | 2016-05-20 09:00 | 2016-05-20 10:00 | 13 |  |  | Tiago | 1h |  |
| 15 | 1.2 | **Análise** |  | 6d | 2016-05-20 09:00 | 2016-05-27 18:00 |  |  |  |  | 34h | 3,200 |
| 16 | 1.2.1 | **Documento de Requisitos** |  | 4d | 2016-05-20 09:00 | 2016-05-25 18:00 |  |  |  |  | 24h | 1,700 |
| 17 | 1.2.1.1 | Reunir-se com o Cliente | manual | 1.12d | 2016-05-20 14:00 | 2016-05-23 15:00 |  |  |  | Tiago | 8h |  |
| 18 | 1.2.1.2 | Elaborar DRE | manual | 1.12d | 2016-05-24 17:00 | 2016-05-25 08:00 | 17 |  |  | Desenvolvedor de código | 14h | 1,400 |
| 19 | 1.2.1.3 | Revisar DRE | manual | 0.25d | 2016-05-25 13:00 | 2016-05-25 15:00 | 18 |  |  | Beatriz | 2h | 300 |
| 20 | 1.2.1.4 | Submeter DRE para aprovação do Cliente | milestone, manual | 0d | 2016-05-25 15:00 | 2016-05-25 15:00 | 19 |  |  | Cliente |  |  |
| 21 | 1.2.2 | **Matriz de Rastreabilidade** |  | 3.25d | 2016-05-26 09:00 | 2016-05-31 11:00 |  | 0d |  |  | 10h | 1,500 |
| 22 | 1.2.2.1 | Analisar DRE | manual | 0.25d | 2016-05-26 09:00 | 2016-05-26 16:00 | 16 |  |  | Adriana | 2h | 300 |
| 23 | 1.2.2.2 | Desenvolver Matriz de Rastreabilidade | manual | 1.75d | 2016-05-26 16:00 | 2016-05-30 18:00 | 22 |  |  | Adriana | 6h | 900 |
| 24 | 1.2.2.3 | Revisar Matriz de Rastreabilidade | manual | 0.12d | 2016-05-30 18:00 | 2016-05-31 11:00 | 23 |  |  | Beatriz | 2h | 300 |

| ID | WBS | Task | Type | Duration | Start | Finish | Predecessors | Total slack | Resources | Work | Cost |
| --- | --- | --- | --- | --- | --- | --- | --- | --- | --- | --- | --- |
| 25 | 1.3 | **Projeto** |  | 6.62d | 2016-05-31 13:00 | 2016-06-08 18:00 |  | 0d |  | 18h | 2,700 |
| 26 | 1.3.1 | **Diagrama de Classes** |  | 6.62d | 2016-05-31 13:00 | 2016-06-08 18:00 |  | 0d |  | 18h | 2,700 |
| 27 | 1.3.1.1 | Elaborar Diagrama de Classes | manual | 4.25d | 2016-05-31 13:00 | 2016-06-04 15:00 | 24 |  | Gabriela | 16h | 2,400 |
| 28 | 1.3.1.2 | Revisar Diagrama de Classes | manual | 0.25d | 2016-06-08 08:00 | 2016-06-08 10:00 | 27 |  | Adriana | 2h | 300 |
| 29 | 1.3.1.3 | Atualizar MRB | milestone, manual | 0d | 2016-06-08 18:00 | 2016-06-08 18:00 | 27 |  | Tiago |  |  |
| 30 | 1.4 | **Modelo Entidade de Relacionamento** |  | 2d | 2016-06-09 07:00 | 2016-06-11 10:00 |  | 0d |  | 7h | 750 |
| 31 | 1.4.1 | Elaborar MER | manual | 0.38d | 2016-06-09 07:00 | 2016-06-09 10:00 | 26 |  | Adriana; Tiago | 5h | 450 |
| 32 | 1.4.2 | Revisar MER | manual | 1.75d | 2016-06-09 13:00 | 2016-06-11 10:00 | 31 |  | Gabriela | 2h | 300 |
| 33 | 1.5 | **Implementação** |  | 31.56d | 2016-05-11 09:00 | 2016-06-23 14:30 |  | 0d |  | 159.77h | 16,446.05 |
| 34 | 1.5.1 | **Implementação 01** |  | 3d | 2016-06-10 13:00 | 2016-06-15 12:00 |  | 0d |  | 21.5h | 2,125 |
| 35 | 1.5.1.1 | **Implementação RFC01** |  | 1.75d | 2016-06-10 13:00 | 2016-06-14 10:00 |  | 0d |  | 16h | 1,600 |
| 36 | 1.5.1.1.1 | Implementar RFS01 | manual | 0.5d | 2016-06-10 13:00 | 2016-06-10 17:00 | 32 |  | Desenvolvedor de código | 4h | 400 |
| 37 | 1.5.1.1.2 | Implementar RFS02 | manual | 0.62d | 2016-06-10 17:00 | 2016-06-11 14:00 | 36 |  | Desenvolvedor de código | 4h | 400 |
| 38 | 1.5.1.1.3 | Implementar RFS03 | manual | 0.5d | 2016-06-13 13:00 | 2016-06-13 17:00 | 37 |  | Desenvolvedor de código | 4h | 400 |
| 39 | 1.5.1.1.4 | Implementar RFS04 | manual | 0.25d | 2016-06-13 17:00 | 2016-06-14 10:00 | 38 |  | Desenvolvedor de código | 4h | 400 |
| 40 | 1.5.1.2 | **Implementação RFC05** |  | 2.62d | 2016-06-10 13:00 | 2016-06-14 18:00 |  |  |  | 1.5h | 225 |
| 41 | 1.5.1.2.1 | Implementar RFS013 | manual | 0.25d | 2016-06-11 10:00 | 2016-06-11 16:00 | 32 |  | Gabriela | 1.5h | 225 |
| 42 | 1.5.1.3 | **Teste** |  | 2.25d | 2016-06-13 10:00 | 2016-06-15 12:00 |  | 0d |  | 4h | 300 |
| 43 | 1.5.1.3.1 | Teste RFC01 | manual | 0.88d | 2016-06-14 14:00 | 2016-06-15 12:00 | 39 |  | Adriana | 2h | 300 |
| 44 | 1.5.1.3.2 | Teste RFC05 | manual | 0.88d | 2016-06-13 10:00 | 2016-06-14 09:00 | 41 |  | Tiago | 2h |  |
| 45 | 1.5.2 | **Implementação 02** |  | 2.38d | 2016-06-11 10:00 | 2016-06-15 12:00 |  | 0d |  | 15h | 1,200 |
| 46 | 1.5.2.1 | **Implementação RFC06** |  | 0d | 2016-06-11 10:00 | 2016-06-11 18:00 |  | 0d |  | 7h |  |
| 47 | 1.5.2.1.1 | Implementar RFS014 | manual | 0.88d | 2016-06-11 10:00 | 2016-06-11 18:00 | 32 |  | Tiago | 7h |  |
| 48 | 1.5.2.2 | **Implementação RFC08** |  | 1d | 2016-06-13 13:00 | 2016-06-14 12:00 |  | 0d |  | 4h | 600 |
| 49 | 1.5.2.2.1 | Implementar RFS018 | manual | 0.62d | 2016-06-13 13:00 | 2016-06-14 12:00 | 32 |  | Beatriz | 4h | 600 |

| ID | WBS | Task | Type | Duration | Start | Finish | Predecessors | Total slack | Resources | Work | Cost |
| --- | --- | --- | --- | --- | --- | --- | --- | --- | --- | --- | --- |
| 50 | 1.5.2.3 | **Teste** |  | 1.88d | 2016-06-13 14:00 | 2016-06-15 12:00 |  | 0d |  | 4h | 600 |
| 51 | 1.5.2.3.1 | Teste RFC06 | manual | 0.88d | 2016-06-13 14:00 | 2016-06-14 12:00 | 47 |  | Adriana | 2h | 300 |
| 52 | 1.5.2.3.2 | Teste RFC08 | manual | 1d | 2016-06-14 13:00 | 2016-06-15 12:00 | 49 |  | Beatriz | 2h | 300 |
| 53 | 1.5.3 | **Implementação 03** |  | 25.25d | 2016-05-13 09:00 | 2016-06-17 11:00 |  | 0d |  | 49.27h | 5,121.05 |
| 54 | 1.5.3.1 | **Implementação RFC02** |  | 25d | 2016-05-13 09:00 | 2016-06-16 18:00 |  |  |  | 10.27h | 821.05 |
| 55 | 1.5.3.1.1 | Implementar RFS05 | milestone, manual | 0d | 2016-06-15 13:00 | 2016-06-15 13:00 | 52 |  | Desenvolvedor de código |  |  |
| 56 | 1.5.3.1.2 | Implementar RFS06 | manual | 1.62d | 2016-06-11 10:00 | 2016-06-13 06:00 | 32 |  | Desenvolvedor de código | 6h | 600 |
| 57 | 1.5.3.1.3 | Implementar RFS07 | manual | 1d | 2016-06-13 08:00 | 2016-06-13 17:00 | 32 |  | Adriana | 1.47h | 221.05 |
| 58 | 1.5.3.1.4 | Implementar RFS08 | manual | 0.88d | 2016-06-11 10:00 | 2016-06-11 18:00 | 32 |  | Tiago | 2.8h |  |
| 59 | 1.5.3.2 | **Implementação RFC04** |  | 1d | 2016-06-16 09:00 | 2016-06-16 18:00 |  | 0d |  | 8h | 800 |
| 60 | 1.5.3.2.1 | Implementar RFS12 | manual | 1d | 2016-06-16 09:00 | 2016-06-16 18:00 | 58 |  | Desenvolvedor de código | 8h | 800 |
| 61 | 1.5.3.3 | **Implementação RFC09** |  | 0.62d | 2016-06-13 14:00 | 2016-06-14 10:00 |  | 0d |  | 13h | 900 |
| 62 | 1.5.3.3.1 | Implementar RFS19 | manual | 0.62d | 2016-06-13 14:00 | 2016-06-14 10:00 | 58 |  | Adriana | 6h | 900 |
| 63 | 1.5.3.3.2 | Implementar RFS20 | manual | 0.62d | 2016-06-13 14:00 | 2016-06-14 10:00 | 58 |  | Tiago | 7h |  |
| 64 | 1.5.3.4 | **Teste** |  | 3.75d | 2016-06-13 14:00 | 2016-06-17 11:00 |  | 0d |  | 18h | 2,600 |
| 65 | 1.5.3.4.1 | Teste RFC02 | manual | 1.5d | 2016-06-13 14:00 | 2016-06-14 18:00 | 58 |  | Gabriela | 14h | 2,100 |
| 66 | 1.5.3.4.2 | Teste RFC04 | manual | 0.25d | 2016-06-17 09:00 | 2016-06-17 11:00 | 60 |  | Desenvolvedor de código | 2h | 200 |
| 67 | 1.5.3.4.3 | Teste RFC09 | manual | 0.25d | 2016-06-14 13:00 | 2016-06-14 17:00 | 63 |  | Beatriz | 2h | 300 |
| 68 | 1.5.4 | **Implementação 04** |  | 5.12d | 2016-06-14 17:00 | 2016-06-21 18:00 |  | 0d |  | 36h | 4,400 |
| 69 | 1.5.4.1 | **Implementação RFC03** |  | 1.62d | 2016-06-14 17:00 | 2016-06-16 14:00 |  | 0d |  | 14h | 1,000 |
| 70 | 1.5.4.1.1 | Implementar RFS09 | manual | 0.5d | 2016-06-14 17:00 | 2016-06-15 12:00 | 67 |  | Tiago | 6h |  |
| 71 | 1.5.4.1.2 | Implementar RFS10 | manual | 0.5d | 2016-06-15 14:00 | 2016-06-15 18:00 | 70 |  | Desenvolvedor de código | 4h | 400 |
| 72 | 1.5.4.1.3 | Implementar RFS11 | manual | 0.62d | 2016-06-16 08:00 | 2016-06-16 14:00 | 71 |  | Adriana | 4h | 600 |
| 73 | 1.5.4.2 | **Implementação RFC07** |  | 2.75d | 2016-06-14 17:00 | 2016-06-17 15:00 |  | 0d |  | 15h | 2,250 |
| 74 | 1.5.4.2.1 | Implementar RFS15 | manual | 0.62d | 2016-06-14 17:00 | 2016-06-15 17:00 | 67 |  | Gabriela | 5h | 750 |
| 75 | 1.5.4.2.2 | Implementar RFS16 | manual | 0.62d | 2016-06-15 16:00 | 2016-06-16 16:00 | 74 |  | Gabriela | 5h | 750 |
| 76 | 1.5.4.2.3 | Implementar RFS17 | manual | 0.5d | 2016-06-16 16:00 | 2016-06-17 15:00 | 75 |  | Beatriz | 5h | 750 |

| ID | WBS | Task | Type | Duration | Start | Finish | Predecessors | Total slack | Resources | Work | Cost |
| --- | --- | --- | --- | --- | --- | --- | --- | --- | --- | --- | --- |
| 77 | 1.5.4.3 | **Teste** |  | 1d | 2016-06-21 09:00 | 2016-06-21 18:00 |  | 0d |  | 7h | 1,150 |
| 78 | 1.5.4.3.1 | Teste RFC03 | manual | 0.25d | 2016-06-21 09:00 | 2016-06-21 15:00 | 72 |  | GP Externo | 2h | 400 |
| 79 | 1.5.4.3.2 | TesteRFC07 | manual | 0.62d | 2016-06-21 09:00 | 2016-06-21 18:00 | 76 |  | Beatriz | 5h | 750 |
| 80 | 1.5.5 | **Monitoramento e Controle** |  | 1d | 2016-05-11 09:00 | 2016-05-11 18:00 |  | 0d |  | 24h | 2,550 |
| 81 | 1.5.5.1 | Acompanhar Projeto | manual | 1d | 2016-05-11 09:00 | 2016-05-11 18:00 |  |  | Adriana; Beatriz; Gabriela; Tiago | 24h | 2,550 |
| 82 | 1.5.6 | **Gerência de Configuração** |  | 1.56d | 2016-06-22 09:00 | 2016-06-23 14:30 |  | 0d |  | 14h | 1,050 |
| 83 | 1.5.6.1 | Elaborar Branch | manual | 0.56d | 2016-06-22 09:00 | 2016-06-22 14:30 | 32 |  | Adriana; Tiago | 7h | 525 |
| 84 | 1.5.6.2 | Realizar Merge da Branch X para a Trunk | manual | 0.56d | 2016-06-23 09:00 | 2016-06-23 14:30 | 32 |  | Adriana; Tiago | 7h | 525 |
